# 成都市市政工程

How a schedule from MS Project changed from version to version. A marks actual dates.

## Version 1 (saved 2023-04-07)

| ID | WBS | Task | Duration | Start | Finish | Predecessors | Total float | Constraint |
| --- | --- | --- | --- | --- | --- | --- | --- | --- |
| 1 | 1 | **管廊工程** | 57d | 2023-04-07 | 2023-06-14 |  | 0d |  |
| 2 |  | 打围护桩 | 15d | 2023-04-07 | 2023-04-24 |  | 0d | start no earlier than 2023-04-07 |
| 3 |  | 土方开挖 | 10d | 2023-04-12 | 2023-04-24 | 2FS-10d | 0d |  |
| 4 |  | 基坑冠梁 | 10d | 2023-04-18 | 2023-05-04 | 3FS-5d | 0d |  |
| 5 |  | 基坑腰梁 | 8d | 2023-04-25 | 2023-05-08 | 4FS-4d | 0d |  |
| 6 |  | 基地处理 | 5d | 2023-04-28 | 2023-05-08 | 5SS+3d | 0d |  |
| 7 |  | 垫层及防水层 | 5d | 2023-05-05 | 2023-05-10 | 6FS-3d | 0d |  |
| 8 |  | 底板绑筋及混凝土 | 20d | 2023-05-08 | 2023-05-30 | 7SS+3d | 0d |  |
| 9 |  | 侧墙绑筋及混凝土 | 30d | 2023-05-11 | 2023-06-14 | 8SS+3d | 0d |  |
| 10 |  | 顶板绑筋及混凝土 | 20d | 2023-05-23 | 2023-06-14 | 9SS+10d | 0d |  |
| 11 |  | 外墙顶板防水及保护层 | 10d | 2023-05-29 | 2023-06-08 | 10SS+5d | 0d |  |
| 12 |  | 肥槽及分层回填 | 10d | 2023-06-01 | 2023-06-12 | 11FS-7d | 0d |  |
| 13 | 2 | **污水工程** | 17d | 2023-06-12 | 2023-07-01 |  | 0d |  |
| 14 |  | 沟槽开挖 | 12d | 2023-06-12 | 2023-06-26 | 12 | 0d |  |
| 15 |  | 检查井 | 15d | 2023-06-14 | 2023-07-01 | 14SS+2d | 0d |  |
| 16 |  | 下管 | 10d | 2023-06-14 | 2023-06-26 | 15SS | 0d |  |
| 17 |  | 回填 | 11d | 2023-06-19 | 2023-07-01 | 16FS-6d | 0d |  |
| 18 | 3 | **道路工程** | 37d | 2023-07-01 | 2023-08-12 |  | 0d |  |
| 19 |  | 路床处理 | 5d | 2023-07-01 | 2023-07-07 | 17 | 0d |  |
| 20 |  | 水稳 | 21d | 2023-07-15 | 2023-08-08 | 19FS+7d | 0d |  |
| 21 |  | 路沿石 | 5d | 2023-08-04 | 2023-08-10 | 20FS-3d | 0d |  |
| 22 |  | 面层 | 2d | 2023-08-10 | 2023-08-12 | 21 | 0d |  |
| 23 | 4 | **绿化工程** | 6d | 2023-08-12 | 2023-08-19 |  | 0d |  |
| 24 |  | 乔木种植 | 5d | 2023-08-12 | 2023-08-18 | 22 | 0d |  |
| 25 |  | 灌木种植 | 3d | 2023-08-14 | 2023-08-17 | 24SS+1d | 2d |  |
| 26 |  | 花卉种植 | 5d | 2023-08-14 | 2023-08-19 | 24SS+1d | 0d |  |

## Version 2 (saved 2023-04-08)

Last finish stays 2023-08-19. Complete tasks 0 → 2.

Changed:

| ID | Task | Start | Finish | Complete | Total float | Other |
| --- | --- | --- | --- | --- | --- | --- |
| 1 | **管廊工程** | 2023-04-07 A |  | 0% → 19% |  |  |
| 2 | 打围护桩 | 2023-04-07 A | 2023-04-24 A | 0% → 100% | 0d → none |  |
| 3 | 土方开挖 | 2023-04-12 A | 2023-04-24 A | 0% → 100% | 0d → none |  |
| 4 | 基坑冠梁 |  |  |  | 0d → 2.5d | resources none → 人力资源 [50%] |
| 6 | 基地处理 | 2023-04-28 A |  | 0% → 50% |  |  |
